# 银行存管【前端】项目计划-范文豪

Schedule from MS Project, 2017-05-10 to 2017-05-24.

## Calendars

- 标准: Mon-Fri 08:00-12:00, 13:00-17:00; Sat-Sun off.

## Resources

| Resource |
| --- |
| 毕轩 |
| 陈燕庆 |
| 冯海燕 |
| 张硕庆 |
| 张硕庆/徐松琛 |
| 戎博/王宏伟 |

## Schedule

| ID | WBS | Task | Type | Duration | Start | Finish | Total slack | Resources | Work |
| --- | --- | --- | --- | --- | --- | --- | --- | --- | --- |
| 1 | 1 | **银行存管需求** |  | 10d | 2017-05-11 | 2017-05-24 | 0d |  | 960h |
| 2 | 1.1 | **前端** |  | 10d | 2017-05-11 | 2017-05-24 | 0d |  | 960h |
| 3 | 1.1.1 | **新爱贷网PC端** |  | 10d | 2017-05-11 | 2017-05-24 | 0d | 毕轩; 陈燕庆; 冯海燕 | 520h |
| 4 | 1.1.1.1 | 账户中心首页存管状态提示 | manual | 1d | 2017-05-11 | 2017-05-11 |  | 毕轩 | 8h |
| 5 | 1.1.1.2 | **开户流程** |  | 9d | 2017-05-12 | 2017-05-24 | 0d | 毕轩 | 144h |
| 6 | 1.1.1.2.1 | 充值、提现、投标、实名绑卡、自动投标增加开户提示(自动投标待定) | manual | 3d | 2017-05-12 | 2017-05-16 |  | 毕轩 | 24h |
| 7 | 1.1.1.2.2 | 开通存管账户弹窗 | manual | 1d | 2017-05-17 | 2017-05-17 |  | 毕轩 | 8h |
| 8 | 1.1.1.2.3 | 新建手机认证页面 | manual | 1d | 2017-05-18 | 2017-05-18 |  | 毕轩 | 8h |
| 9 | 1.1.1.2.4 | 实名开户页面 | manual | 1d | 2017-05-19 | 2017-05-19 |  | 毕轩 | 8h |
| 10 | 1.1.1.2.5 | 富有开户页对接 | manual | 2d | 2017-05-22 | 2017-05-23 |  | 毕轩 | 16h |
| 11 | 1.1.1.2.6 | 开户结果页 | manual | 1d | 2017-05-24 | 2017-05-24 |  | 毕轩 | 8h |
| 12 | 1.1.1.3 | **更换银行卡流程** |  | 5d | 2017-05-11 | 2017-05-17 | 0d | 冯海燕 | 80h |
| 13 | 1.1.1.3.1 | 个人中心-安全中心修改 | manual | 1d | 2017-05-11 | 2017-05-11 |  | 冯海燕 | 8h |
| 14 | 1.1.1.3.2 | 验证手机号页面 | manual | 1d | 2017-05-12 | 2017-05-12 |  | 冯海燕 | 8h |
| 15 | 1.1.1.3.3 | 填写新卡 | manual | 1d | 2017-05-15 | 2017-05-15 |  | 冯海燕 | 8h |
| 16 | 1.1.1.3.4 | 提交照片资料 | manual | 1d | 2017-05-16 | 2017-05-16 |  | 冯海燕 | 8h |
| 17 | 1.1.1.3.5 | 更换成功 | manual | 1d | 2017-05-17 | 2017-05-17 |  | 冯海燕 | 8h |
| 18 | 1.1.1.4 | **修改支付密码** |  | 3d | 2017-05-15 | 2017-05-17 | 0d | 陈燕庆 | 48h |
| 19 | 1.1.1.4.1 | 流程对接(待定) | manual | 1d | 2017-05-15 | 2017-05-15 |  | 陈燕庆 | 8h |
| 20 | 1.1.1.4.2 | 账户中心-修改支付密码页 | manual | 1d | 2017-05-16 | 2017-05-16 |  | 陈燕庆 | 8h |
| 21 | 1.1.1.4.3 | 忘记支付密码页 | manual | 1d | 2017-05-17 | 2017-05-17 |  | 陈燕庆 | 8h |
| 22 | 1.1.2 | **新爱贷网移动端** |  | 10d | 2017-05-11 | 2017-05-24 | 0d | 张硕庆/徐松琛; 戎博/王宏伟 | 440h |
| 23 | 1.1.2.1 | 账户中心首页存管状态提示 | manual | 1d | 2017-05-11 | 2017-05-11 |  | 张硕庆/徐松琛 | 8h |
| 24 | 1.1.2.2 | **开户流程** |  | 9d | 2017-05-12 | 2017-05-24 | 0d | 张硕庆/徐松琛 | 144h |
| 25 | 1.1.2.2.1 | 充值、提现、投标、实名绑卡、自动投标增加开户提示(自动投标待定) | manual | 3d | 2017-05-12 | 2017-05-16 |  | 张硕庆/徐松琛 | 24h |
| 26 | 1.1.2.2.2 | 开通存管账户弹窗 | manual | 1d | 2017-05-17 | 2017-05-17 |  | 张硕庆/徐松琛 | 8h |
| 27 | 1.1.2.2.3 | 新建手机认证页面 | manual | 1d | 2017-05-18 | 2017-05-18 |  | 张硕庆/徐松琛 | 8h |
| 28 | 1.1.2.2.4 | 实名开户页面 | manual | 1d | 2017-05-19 | 2017-05-19 |  | 张硕庆/徐松琛 | 8h |
| 29 | 1.1.2.2.5 | 富有开户页对接 | manual | 2d | 2017-05-22 | 2017-05-23 |  | 张硕庆/徐松琛 | 16h |
| 30 | 1.1.2.2.6 | 开户结果页 | manual | 1d | 2017-05-24 | 2017-05-24 |  | 张硕庆/徐松琛 | 8h |

| ID | WBS | Task | Type | Duration | Start | Finish | Resources | Work |
| --- | --- | --- | --- | --- | --- | --- | --- | --- |
| 31 | 1.1.2.3 | **更换银行卡流程** |  | 5d | 2017-05-15 | 2017-05-19 | 戎博/王宏伟 | 80h |
| 32 | 1.1.2.3.1 | 个人中心-安全中心修改 | manual | 1d | 2017-05-11 | 2017-05-11 | 戎博/王宏伟 | 8h |
| 33 | 1.1.2.3.2 | 验证手机号页面 | manual | 1d | 2017-05-12 | 2017-05-12 | 戎博/王宏伟 | 8h |
| 34 | 1.1.2.3.3 | 填写新卡 | manual | 1d | 2017-05-15 | 2017-05-15 | 戎博/王宏伟 | 8h |
| 35 | 1.1.2.3.4 | 提交照片资料 | manual | 1d | 2017-05-16 | 2017-05-16 | 戎博/王宏伟 | 8h |
| 36 | 1.1.2.3.5 | 更换成功 | manual | 1d | 2017-05-17 | 2017-05-17 | 戎博/王宏伟 | 8h |
| 37 | 1.1.2.4 | **修改支付密码** |  | 3d | 2017-05-19 | 2017-05-23 | 戎博/王宏伟 | 48h |
| 38 | 1.1.2.4.1 | 流程对接(待定) | manual | 1d | 2017-05-15 | 2017-05-15 | 戎博/王宏伟 | 8h |
| 39 | 1.1.2.4.2 | 账户中心-修改支付密码页 | manual | 1d | 2017-05-16 | 2017-05-16 | 戎博/王宏伟 | 8h |
| 40 | 1.1.2.4.3 | 忘记支付密码页 | manual | 1d | 2017-05-17 | 2017-05-17 | 戎博/王宏伟 | 8h |
| 41 | 2 | 联调 | manual | 5d | 2017-05-10 | 2017-05-16 |  |  |
| 42 | 3 | 测试 | manual | 5d | 2017-05-10 | 2017-05-16 |  |  |
